Schedule from OmniPlan, 2013-06-25 to 2014-02-20.
Project start 2013-06-24

## Resources

| Resource | Group |
| --- | --- |
| Resource 1 | staff |
| Equipment 1 | equipment |
| Material 1 | material |
| Group 1 | group |
| MLaunier | staff |
| User1 | staff |

## Schedule

| ID | WBS | Task | Start | Complete | Resources | Work | Actual work |
| --- | --- | --- | --- | --- | --- | --- | --- |
| 1 | 1 | **iCanScript v0.9.3** |  |  |  |  |  |
| 2 | 1.1 | **Features** |  |  |  |  |  |
| 3 | 1.1.1 | **Messages** |  |  |  |  |  |
| 4 | 1.1.1.1 | Add messages to Library Database | 2013-06-25 | 100% | MLaunier | 24h | 24h |
| 5 | 1.1.1.2 | Install Behaviour messages | 2013-06-25 | 100% | MLaunier | 4h | 4h |
| 6 | 1.1.1.3 | Highlight message nodes | 2013-06-25 | 100% | MLaunier | 8h | 8h |
| 7 | 1.1.1.4 | Validate insertion of message | 2013-06-25 | 100% | MLaunier | 8h | 8h |
| 8 | 1.1.1.5 | **Messages in Engine** |  |  |  |  |  |
| 9 | 1.1.1.5.1 | Dynamic message processing | 2013-06-26 | 100% | MLaunier | 4h | 4h |
| 10 | 1.1.1.5.2 | Message Action | 2013-06-27 |  | MLaunier | 4h |  |
| 11 | 1.1.1.5.3 | Generate Behaviour code | 2013-06-27 |  | MLaunier | 8h |  |
| 12 | 1.1.1.5.4 | Code Engineering in Preferences | 2013-06-28 | 100% | MLaunier | 3h | 3h |
| 13 | 1.1.1.6 | Message icon in hierarchy | 2013-06-28 |  | MLaunier | 4h |  |
| 14 | 1.1.1.7 | Message icon in library | 2013-07-02 |  | MLaunier | 4h |  |
| 15 | 1.1.1.8 | v0.9.2 -> v0.9.3 upgrade (behaviour) | 2013-06-28 | 100% | MLaunier | 8h | 8h |
| 16 | 1.1.1.9 | Update Documentation | 2013-07-03 |  | MLaunier | 8h |  |
| 17 | 1.1.1.10 | Update WebSite | 2013-07-04 |  | MLaunier | 8h |  |
| 18 | 1.1.2 | iCanScript Dialog Box | 2013-07-05 |  | MLaunier | 8h |  |
| 19 | 1.1.3 | Conditional Execution | 2013-07-09 | 100% | MLaunier | 40h | 40h |
| 20 | 1.1.4 | **New Navigation** |  |  |  |  |  |
| 21 | 1.1.4.1 | Z key - Birds eye view | 2013-07-09 |  | MLaunier | 8h |  |
| 22 | 1.1.5 | Port relocation on any edge | 2013-07-10 |  | MLaunier | 16h |  |
| 23 | 1.1.6 | New port icon in hierarchy | 2013-07-15 | 100% | MLaunier | 8h | 8h |
| 24 | 1.1.7 | Rename Module to Actor | 2013-07-15 |  | MLaunier | 4h |  |
| 25 | 1.1.8 | Redo documentation port icons | 2013-07-15 |  | MLaunier | 24h |  |

Notes:
- 18: Includes alert box
- 20: Scapple like

| ID | WBS | Task | Type | Start | Predecessors | Complete | Resources | Work | Actual work |
| --- | --- | --- | --- | --- | --- | --- | --- | --- | --- |
| 26 | 1.2 | **Bugs** |  |  |  |  |  |  |  |
| 27 | 1.2.1 | Search field delete icon |  | 2013-07-19 |  |  | MLaunier | 8h |  |
| 28 | 1.2.2 | Static function of Behaviour not reflected |  | 2013-08-28 |  |  | MLaunier | 8h |  |
| 29 | 1.2.3 | Reject addition of existing class in Library Database |  | 2013-08-29 |  |  | MLaunier | 8h |  |
| 30 | 1.2.4 | Hierarchy not functional |  | 2013-08-30 |  | 100% | MLaunier | 16h | 16h |
| 31 | 1.2.5 | Stop install to run on every frame |  | 2013-08-30 |  |  | MLaunier | 8h |  |
| 32 | 1.3 | Cleanup Library components |  | 2013-09-02 |  |  | MLaunier | 16h |  |
| 33 | 1.4 | Cleanup Documentation |  | 2013-09-04 |  |  | MLaunier | 40h |  |
| 34 | 1.5 | Improve Documentation |  | 2013-09-11 |  |  | MLaunier | 80h |  |
| 35 | 1.6 | Cleanup WebSite |  | 2013-09-25 |  |  | MLaunier | 40h |  |
| 36 | 1.7 | Prepare Release v0.9.3 |  | 2013-10-02 |  |  | MLaunier | 8h |  |
| 37 | 1.8 | Release v0.9.3 | milestone |  | 36 |  |  |  |  |
| 38 | 2 | **iCanScript v1.0.0** |  |  |  |  |  |  |  |
| 39 | 2.1 | Prepare Release v1.0.0 |  | 2013-10-03 | 32 |  | MLaunier | 8h |  |
| 40 | 2.2 | Submission to Unity |  | 2013-10-07 | 39 |  | MLaunier | 80h |  |
| 41 | 2.3 | Submission Corrections |  | 2013-10-21 | 40 |  | MLaunier | 80h |  |
| 42 | 2.4 | Unity Store Availability | milestone |  | 41 |  |  |  |  |
| 43 | 2.5 | WebSite |  | 2013-11-01 |  |  | MLaunier | 120h |  |
| 44 | 2.6 | Release v1.0.0 | milestone |  | 43 |  |  |  |  |
| 45 | 3 | **iCanScript v1.0.1 (Cleanup)** |  |  |  |  |  |  |  |
| 46 | 3.1 | **Features** |  |  |  |  |  |  |  |
| 47 | 3.1.1 | Icons cleanup library & hierarchy |  | 2013-11-22 |  |  | MLaunier | 16h |  |
| 48 | 3.1.2 | Show base class in Library |  | 2013-11-26 |  |  | MLaunier | 16h |  |
| 49 | 3.1.3 | Hide getter/setter in instance node |  | 2013-11-28 |  |  | MLaunier | 16h |  |
| 50 | 3.1.4 | Icons for Behaviour messages |  | 2013-12-02 |  |  | MLaunier | 24h |  |
| 51 | 3.1.5 | Icons for Unity Classes |  | 2013-12-05 |  |  | MLaunier | 40h |  |
| 52 | 3.1.6 | .NET AttributeToolTip -> Description |  | 2013-12-12 |  |  | MLaunier | 4h |  |
| 53 | 3.2 | Prepare Release v1.0.1 |  | 2013-12-13 |  |  | MLaunier | 8h |  |
| 54 | 3.3 | Release v1.0.1 | milestone |  | 53 |  |  |  |  |

Notes:
- 31: This is causing disk access to see if the folders are created.

| ID | WBS | Task | Type | Start | Predecessors | Resources | Work |
| --- | --- | --- | --- | --- | --- | --- | --- |
| 55 | 4 | **iCanScript v1.1.0** |  |  |  |  |  |
| 56 | 4.1 | **Features** |  |  |  |  |  |
| 57 | 4.1.1 | Add fields/property to Behaviour |  | 2013-12-16 |  | MLaunier | 80h |
| 58 | 4.1.2 | Behaviour interconnection |  | 2014-01-13 |  | MLaunier | 80h |
| 59 | 4.1.3 | Merge all windows |  | 2014-01-27 |  | MLaunier | 40h |
| 60 | 4.1.4 | Multiple opened visual editors |  | 2014-02-03 |  | MLaunier | 40h |
| 61 | 4.1.5 | Orthogonal lines for connections |  | 2014-02-10 |  | MLaunier | 40h |
| 62 | 4.1.6 | Vector type conversion |  | 2014-02-17 |  | MLaunier | 16h |
| 63 | 4.2 | Prepare Release v1.1.0 |  | 2014-02-19 |  | MLaunier | 8h |
| 64 | 4.3 | Release v1.1.0 | milestone |  | 63 |  |  |
| 65 | 5 | Tutorials |  | 2014-02-20 |  | MLaunier | 8h |

Notes:
- 58: Using module ports.
- 59: Simplify full screen mode
- 62: Should allow for component rearrangement
