Schedule from OmniPlan, 2013-06-25 to 2013-11-19.
Project start 2013-06-24

## Resources

| Resource | Group |
| --- | --- |
| Resource 1 | staff |
| Equipment 1 | equipment |
| Material 1 | material |
| Group 1 | group |
| MLaunier | staff |
| User1 | staff |

## Schedule

| ID | WBS | Task | Start | Complete | Resources | Work | Actual work |
| --- | --- | --- | --- | --- | --- | --- | --- |
| 1 | 1 | **iCanScript v0.9.3** |  |  |  |  |  |
| 2 | 1.1 | **Features** |  |  |  |  |  |
| 3 | 1.1.1 | **Messages** |  |  |  |  |  |
| 4 | 1.1.1.1 | Add messages to Library Database | 2013-06-25 | 100% | MLaunier | 24h | 24h |
| 5 | 1.1.1.2 | Install Behaviour messages | 2013-06-25 | 100% | MLaunier | 4h | 4h |
| 6 | 1.1.1.3 | Highlight message nodes | 2013-06-25 | 100% | MLaunier | 8h | 8h |
| 7 | 1.1.1.4 | Validate insertion of message | 2013-06-25 | 100% | MLaunier | 8h | 8h |
| 8 | 1.1.1.5 | System Events / Callbacks | 2013-07-05 | 100% | MLaunier | 16h | 16h |
| 9 | 1.1.1.6 | **Messages in Engine** |  |  |  |  |  |
| 10 | 1.1.1.6.1 | Dynamic message processing | 2013-06-26 | 100% | MLaunier | 4h | 4h |
| 11 | 1.1.1.6.2 | Message Action | 2013-07-05 | 100% | MLaunier | 16h | 16h |
| 12 | 1.1.1.6.3 | Generate Behaviour code | 2013-07-05 | 100% | MLaunier | 8h | 8h |
| 13 | 1.1.1.6.4 | Code Engineering in Preferences | 2013-06-28 | 100% | MLaunier | 3h | 3h |
| 14 | 1.1.1.6.5 | Startup Manager | 2013-07-03 | 100% | MLaunier | 4h | 4h |
| 15 | 1.1.1.7 | Message icon in hierarchy | 2013-07-15 | 100% | MLaunier | 4h | 4h |
| 16 | 1.1.1.8 | Message icon in library | 2013-07-17 | 100% | MLaunier | 4h | 4h |
| 17 | 1.1.1.9 | v0.9.2 -> v0.9.3 upgrade (behaviour) | 2013-06-28 | 100% | MLaunier | 8h | 8h |
| 18 | 1.1.2 | **Conditional Execution** |  |  |  |  |  |
| 19 | 1.1.2.1 | InTrigger Port on Packages | 2013-08-28 | 100% | MLaunier | 8h | 8h |
| 20 | 1.1.2.2 | OutTrigger Port on Packages | 2013-08-29 | 100% | MLaunier | 16h | 16h |
| 21 | 1.1.2.3 | Mux Output on package | 2013-07-22 | 100% | MLaunier | 4h | 4h |
| 22 | 1.1.2.4 | Redo OutMux icon | 2013-08-28 | 100% | MLaunier | 8h | 8h |
| 23 | 1.1.2.5 | Build InMux icon | 2013-08-28 | 100% | MLaunier | 8h | 8h |
| 24 | 1.1.2.6 | Mux Input port on package & State | 2013-07-23 | 100% | MLaunier | 8h | 8h |
| 25 | 1.1.2.7 | Mux node | 2013-08-29 | 100% | MLaunier | 8h | 8h |

Notes:
- 20: Must also include output 'this' port for object instance
- 21: Does not Appear @ good location

| ID | WBS | Task | Start | Complete | Resources | Work | Actual work |
| --- | --- | --- | --- | --- | --- | --- | --- |
| 26 | 1.1.3 | **Hide object instance internals** |  |  |  |  |  |
| 27 | 1.1.3.1 | Hide nodes (functions, fields & properties) | 2013-07-17 | 100% | MLaunier | 4h | 4h |
| 28 | 1.1.3.2 | Add output "this" | 2013-08-30 | 100% | MLaunier | 8h | 8h |
| 29 | 1.1.3.3 | Port delete->Proper cleanup. | 2013-08-30 | 100% | MLaunier | 6h | 6h |
| 30 | 1.1.4 | New port icon in hierarchy | 2013-07-15 | 100% | MLaunier | 8h | 8h |
| 31 | 1.1.5 | Rename Module to Aggregate | 2013-09-04 | 100% | MLaunier | 4h | 4h |
| 32 | 1.2 | **Bugs** |  |  |  |  |  |
| 33 | 1.2.1 | Search field delete icon | 2013-08-30 |  | MLaunier | 8h |  |
| 34 | 1.2.2 | Static function of Behaviour not reflected | 2013-09-02 |  | MLaunier | 8h |  |
| 35 | 1.2.3 | Reject addition of existing class in Library Database | 2013-09-03 |  | MLaunier | 8h |  |
| 36 | 1.2.4 | Hierarchy not functional | 2013-08-30 | 100% | MLaunier | 16h | 16h |
| 37 | 1.2.5 | Stop install to run on every frame | 2013-09-12 | 100% | MLaunier | 4h | 4h |
| 38 | 1.2.6 | LateUpdate is create module instead of message | 2013-09-04 | 100% | MLaunier | 8h | 8h |
| 39 | 1.2.7 | Null exception when selecting message node | 2013-09-06 | 100% | MLaunier | 8h | 8h |
| 40 | 1.2.8 | Remove "this" port for messages under Behaviour | 2013-09-09 | 100% | MLaunier | 8h | 8h |
| 41 | 1.2.9 | Refuse deleting function ports | 2013-09-05 | 100% | MLaunier | 2h | 2h |
| 42 | 1.2.10 | Execution sometimes messes up port connection | 2013-09-16 | 100% | MLaunier | 8h | 8h |
| 43 | 1.2.11 | Port name for field / property on instance object node. | 2013-09-12 | 100% | MLaunier | 2h | 2h |
| 44 | 1.2.12 | Use end port icon for field / property on instance object node. | 2013-09-16 | 100% | MLaunier | 8h | 8h |
| 45 | 1.2.13 | Port colour coding for hierarchy/library panel | 2013-09-04 |  | MLaunier | 8h |  |
| 46 | 1.2.14 | Execution hangs when 'this' is null | 2013-09-05 |  | MLaunier | 4h |  |
| 47 | 1.2.15 | Instance Node menu should not include package nested node creation. | 2013-09-06 | 100% | MLaunier | 4h | 4h |
| 48 | 1.2.16 | Window drag is at wrong position | 2013-09-06 | 100% | MLaunier | 8h | 8h |
| 49 | 1.2.17 | Remove foldout on object instance node | 2013-09-05 | 100% | MLaunier | 2h | 2h |
| 50 | 1.2.18 | Behaviour Message ports not showing game object default ports | 2013-09-17 | 100% | MLaunier | 4h | 4h |
| 51 | 1.2.19 | Reject generated behaviour in Library | 2013-09-11 | 100% | MLaunier | 8h | 8h |
| 52 | 1.3 | Cleanup Library components | 2013-09-05 |  | MLaunier | 12h |  |

Notes:
- 37: This is causing disk access to see if the folders are created.

| ID | WBS | Task | Type | Start | Predecessors | Resources | Work |
| --- | --- | --- | --- | --- | --- | --- | --- |
| 53 | 1.4 | **Improvements** |  |  |  |  |  |
| 54 | 1.4.1 | Control ports on all nodes |  | 2013-09-09 |  | MLaunier | 8h |
| 55 | 1.4.2 | iCanScript Dialog Box |  | 2013-09-10 |  | MLaunier | 8h |
| 56 | 1.5 | **Documentation** |  |  | 2, 52, 53 |  |  |
| 57 | 1.5.1 | Cleanup Documentation |  | 2013-09-11 |  | MLaunier | 40h |
| 58 | 1.5.2 | Add Messages |  | 2013-09-18 |  | MLaunier | 8h |
| 59 | 1.5.3 | Improve Documentation |  | 2013-09-19 |  | MLaunier | 80h |
| 60 | 1.6 | **WebSite** |  |  |  |  |  |
| 61 | 1.6.1 | Cleanup WebSite |  | 2013-10-03 |  | MLaunier | 40h |
| 62 | 1.6.2 | Add Messages |  | 2013-10-10 |  | MLaunier | 8h |
| 63 | 1.6.3 | Improve WebSite |  | 2013-10-11 |  | MLaunier | 40h |
| 64 | 1.7 | Prepare Release v0.9.3 |  | 2013-10-18 | 32, 56 | MLaunier | 8h |
| 65 | 1.8 | Release v0.9.3 | milestone |  | 64 |  |  |
| 66 | 2 | **iCanScript v1.0.0** |  |  |  |  |  |
| 67 | 2.1 | Prepare Release v1.0.0 |  | 2013-10-21 | 65 | MLaunier | 8h |
| 68 | 2.2 | Submission to Unity |  | 2013-10-22 | 67 | MLaunier | 80h |
| 69 | 2.3 | Submission Corrections |  | 2013-11-05 | 68 | MLaunier | 80h |
| 70 | 2.4 | Unity Store Availability | milestone |  | 69 |  |  |
| 71 | 2.5 | WebSite |  | 2013-11-19 | 60 | MLaunier | 120h |
| 72 | 2.6 | Release v1.0.0 | milestone |  | 71, 70 |  |  |

Notes:
- 55: Includes alert box
