Schedule from OmniPlan, 2013-06-25 to 2013-11-12.
Project start 2013-06-24

## Resources

| Resource | Group |
| --- | --- |
| Resource 1 | staff |
| Equipment 1 | equipment |
| Material 1 | material |
| Group 1 | group |
| MLaunier | staff |
| User1 | staff |

## Schedule

| ID | WBS | Task | Start | Complete | Resources | Work | Actual work |
| --- | --- | --- | --- | --- | --- | --- | --- |
| 1 | 1 | **iCanScript v0.9.3** |  |  |  |  |  |
| 2 | 1.1 | **Features** |  |  |  |  |  |
| 3 | 1.1.1 | **Messages** |  |  |  |  |  |
| 4 | 1.1.1.1 | Add messages to Library Database | 2013-06-25 | 100% | MLaunier | 24h | 24h |
| 5 | 1.1.1.2 | Install Behaviour messages | 2013-06-25 | 100% | MLaunier | 4h | 4h |
| 6 | 1.1.1.3 | Highlight message nodes | 2013-06-25 | 100% | MLaunier | 8h | 8h |
| 7 | 1.1.1.4 | Validate insertion of message | 2013-06-25 | 100% | MLaunier | 8h | 8h |
| 8 | 1.1.1.5 | **Messages in Engine** |  |  |  |  |  |
| 9 | 1.1.1.5.1 | Dynamic message processing | 2013-06-26 | 100% | MLaunier | 4h | 4h |
| 10 | 1.1.1.5.2 | Message Action | 2013-07-02 |  | MLaunier | 4h |  |
| 11 | 1.1.1.5.3 | Generate Behaviour code | 2013-07-03 |  | MLaunier | 8h |  |
| 12 | 1.1.1.5.4 | Code Engineering in Preferences | 2013-06-28 | 100% | MLaunier | 3h | 3h |
| 13 | 1.1.1.5.5 | Startup Manager | 2013-07-03 | 100% | MLaunier | 4h | 4h |
| 14 | 1.1.1.6 | Message icon in hierarchy | 2013-07-04 |  | MLaunier | 4h |  |
| 15 | 1.1.1.7 | Message icon in library | 2013-07-05 |  | MLaunier | 4h |  |
| 16 | 1.1.1.8 | v0.9.2 -> v0.9.3 upgrade (behaviour) | 2013-06-28 | 100% | MLaunier | 8h | 8h |
| 17 | 1.1.1.9 | Update Documentation | 2013-07-08 |  | MLaunier | 8h |  |
| 18 | 1.1.1.10 | Update WebSite | 2013-07-09 |  | MLaunier | 8h |  |
| 19 | 1.1.2 | iCanScript Dialog Box | 2013-07-10 |  | MLaunier | 8h |  |
| 20 | 1.1.3 | Conditional Execution | 2013-07-12 |  | MLaunier | 40h |  |
| 21 | 1.1.4 | **Hide object instance internals** |  |  |  |  |  |
| 22 | 1.1.4.1 | Hide nodes (functions, fields & properties) | 2013-07-17 | 100% | MLaunier | 4h | 4h |
| 23 | 1.1.4.2 | Add output "this" | 2013-08-28 |  | MLaunier | 8h |  |
| 24 | 1.1.4.3 | Port delete->Proper cleanup. | 2013-08-29 |  | MLaunier | 6h |  |
| 25 | 1.1.5 | New port icon in hierarchy | 2013-07-15 | 100% | MLaunier | 8h | 8h |
| 26 | 1.1.6 | Rename Module to Actor | 2013-08-30 |  | MLaunier | 4h |  |
| 27 | 1.1.7 | Redo documentation port icons | 2013-08-30 |  | MLaunier | 24h |  |

Notes:
- 19: Includes alert box

| ID | WBS | Task | Type | Start | Predecessors | Complete | Resources | Work | Actual work |
| --- | --- | --- | --- | --- | --- | --- | --- | --- | --- |
| 28 | 1.2 | **Bugs** |  |  |  |  |  |  |  |
| 29 | 1.2.1 | Search field delete icon |  | 2013-09-04 |  |  | MLaunier | 8h |  |
| 30 | 1.2.2 | Static function of Behaviour not reflected |  | 2013-09-05 |  |  | MLaunier | 8h |  |
| 31 | 1.2.3 | Reject addition of existing class in Library Database |  | 2013-09-06 |  |  | MLaunier | 8h |  |
| 32 | 1.2.4 | Hierarchy not functional |  | 2013-08-30 |  | 100% | MLaunier | 16h | 16h |
| 33 | 1.2.5 | Stop install to run on every frame |  | 2013-09-12 |  | 100% | MLaunier | 4h | 4h |
| 34 | 1.2.6 | LateUpdate is create module instead of message |  | 2013-09-04 |  | 100% | MLaunier | 8h | 8h |
| 35 | 1.2.7 | Null exception when selecting message node |  | 2013-09-06 |  | 100% | MLaunier | 8h | 8h |
| 36 | 1.2.8 | Remove "this" port for messages under Behaviour |  | 2013-09-09 |  |  | MLaunier | 8h |  |
| 37 | 1.2.9 | Refuse deleting function ports |  | 2013-09-10 |  |  | MLaunier | 8h |  |
| 38 | 1.2.10 | Reject generated behaviour in Library |  | 2013-09-11 |  | 100% | MLaunier | 8h | 8h |
| 39 | 1.3 | Cleanup Library components |  | 2013-09-11 |  |  | MLaunier | 16h |  |
| 40 | 1.4 | Cleanup Documentation |  | 2013-09-13 |  |  | MLaunier | 40h |  |
| 41 | 1.5 | Improve Documentation |  | 2013-09-20 |  |  | MLaunier | 80h |  |
| 42 | 1.6 | Cleanup WebSite |  | 2013-10-04 |  |  | MLaunier | 40h |  |
| 43 | 1.7 | Prepare Release v0.9.3 |  | 2013-10-11 |  |  | MLaunier | 8h |  |
| 44 | 1.8 | Release v0.9.3 | milestone |  | 43 |  |  |  |  |
| 45 | 2 | **iCanScript v1.0.0** |  |  |  |  |  |  |  |
| 46 | 2.1 | Prepare Release v1.0.0 |  | 2013-10-14 | 39 |  | MLaunier | 8h |  |
| 47 | 2.2 | Submission to Unity |  | 2013-10-15 | 46 |  | MLaunier | 80h |  |
| 48 | 2.3 | Submission Corrections |  | 2013-10-29 | 47 |  | MLaunier | 80h |  |
| 49 | 2.4 | Unity Store Availability | milestone |  | 48 |  |  |  |  |
| 50 | 2.5 | WebSite |  | 2013-11-12 |  |  | MLaunier | 120h |  |
| 51 | 2.6 | Release v1.0.0 | milestone |  | 50 |  |  |  |  |

Notes:
- 33: This is causing disk access to see if the folders are created.
